# NEIM Schedule

Schedule from MS Project, 2012-07-06 to 2013-06-24.
ACT, Incorporated

## Calendars

- Standard: Mon-Fri 08:00-12:00, 13:00-17:00; Sat-Sun off.

## Resources

| Resource |
| --- |
| TAB |
| PESC Board |
| 2 |
| NIEM Steward TF |
| PESC TAB |
| PESC CCB |
| PESC ERUG |

## Schedule

| ID | WBS | Task | Type | Duration | Start | Finish | Predecessors | Total slack | Free slack | Resources | Work |
| --- | --- | --- | --- | --- | --- | --- | --- | --- | --- | --- | --- |
| 1 | 1 | TAB Recommendation and Schedule |  | 5w | 2012-07-06 | 2012-08-09 |  | 147d | 0d | TAB | 200h |
| 2 | 2 | PESC Board Approval |  | 2w | 2012-08-10 | 2012-08-23 | 1 | 147d | 0d | PESC Board | 80h |
| 3 | 3 | Form NIEM Steward Task Force |  | 2w | 2012-08-24 | 2012-09-06 | 2 | 147d | 0d | PESC Board | 80h |
| 4 | 4 | **Gain Approval of Education Domain** |  | 60d | 2012-09-07 | 2012-11-29 | 3 | 147d |  |  | 560h |
| 5 | 4.1 | Complete Value Proposition (VP) |  | 6w | 2012-09-07 | 2012-10-18 |  | 147d | 0d | NIEM Steward TF | 240h |
| 6 | 4.2 | Complete VP Presentation |  | 2w | 2012-10-05 | 2012-10-18 | 5FF | 147d | 0d | NIEM Steward TF | 80h |
| 7 | 4.3 | Present VP to NIEM PMO |  | 2w | 2012-10-19 | 2012-11-01 | 5, 6 | 147d | 0d | NIEM Steward TF | 80h |
| 8 | 4.4 | Present VP to NIEM Business Architecture Committee |  | 2w | 2012-11-02 | 2012-11-15 | 7 | 147d | 0d | NIEM Steward TF | 80h |
| 9 | 4.5 | Present VP to NIEM Executive Steering Council |  | 2w | 2012-11-16 | 2012-11-29 | 8 | 147d | 0d | NIEM Steward TF | 80h |
| 10 | 4.6 | Executive Steering Council Approval | milestone | 0d | 2012-11-29 | 2012-11-29 | 9 | 147d |  |  |  |
| 11 | 5 | Put Definitions for Elements and Codes in Workbook |  | 4w | 2012-07-06 | 2012-08-02 |  | 0d |  | PESC CCB | 160h |
| 12 | 6 | **Determine Element Changes for NIEM Compliance** |  | 84d | 2012-08-03 | 2012-11-28 |  | 0d |  |  | 672h |
| 13 | 6.1 | Determine Representation Terms for Elements |  | 3w | 2012-08-03 | 2012-08-23 | 11 | 0d |  | PESC CCB | 120h |
| 14 | 6.2 | Run CAM Tool on PESC/FSA schemas |  | 4w | 2012-08-24 | 2012-09-20 | 13 | 0d |  | PESC TAB | 160h |
| 15 | 6.3 | Evaluate non-compliant Simple Elements Representation Terms |  | 14d | 2012-10-02 | 2012-10-19 | 18 | 0d |  | PESC CCB | 112h |
| 16 | 6.4 | Evaluate non-compliant no restriction Simple Elements |  | 7d | 2012-11-09 | 2012-11-19 | 19 | 0d |  | PESC CCB | 56h |
| 17 | 6.5 | Evaluate non-compliant Numeric Representation Elements |  | 7d | 2012-11-20 | 2012-11-28 | 16 | 0d |  | PESC CCB | 56h |
| 18 | 6.6 | Evaluate nillable elements for meaning |  | 7d | 2012-09-21 | 2012-10-01 | 14 | 0d |  | PESC CCB | 56h |
| 19 | 6.7 | Evaluate non-compliant Character Length Constraint |  | 14d | 2012-10-22 | 2012-11-08 | 15 | 0d |  | PESC CCB | 112h |
| 20 | 7 | Generate NIEM Compliant Schemas |  | 28d | 2012-11-29 | 2013-01-07 | 12, 11 | 0d |  | PESC TAB | 224h |
| 21 | 8 | Create College Transcript IEPD |  | 6w | 2013-01-08 | 2013-02-18 | 20 | 90d |  | PESC ERUG | 240h |
| 22 | 9 | Create CEDS NIEM Compliant Schema |  | 24w | 2013-01-08 | 2013-06-24 | 20 | 0d |  | PESC CCB | 960h |
